# Tutorial2-2

Schedule from MS Project, 2020-04-20 to 2020-10-02, status date 2020-05-01, A marks actual dates.

## Calendars

- 标准: Mon-Fri 08:00-12:00, 13:00-17:00; Sat-Sun off.

## Resources

| Resource |
| --- |
| Belinda |
| Tom |
| Daisy |
| Gavin |
| Purdy |
| Justin |
| Spencer |
| Amanada |

## Schedule

| ID | Task | Duration | Start | Finish | Predecessors | Complete | Remaining | Baseline start | Baseline finish | Baseline duration | Total slack | Free slack | Constraint | Resources | Work | Actual work |
| --- | --- | --- | --- | --- | --- | --- | --- | --- | --- | --- | --- | --- | --- | --- | --- | --- |
| 1 | specify owerall design | 34d | 2020-04-20 A | 2020-06-04 A |  | 100% |  | 2020-04-20 | 2020-06-04 | 34d |  |  |  | Amanada | 272h | 272h |
| 2 | specify module A | 20d | 2020-06-05 A | 2020-07-02 A | 1 | 100% |  | 2020-06-05 | 2020-07-02 | 20d |  |  |  | Daisy | 160h | 160h |
| 3 | specify module B | 15d | 2020-06-05 A | 2020-06-25 | 1 | 50% | 7.5d | 2020-06-05 | 2020-06-25 | 15d | 26d | 25d |  | Belinda | 120h | 60h |
| 4 | specify module C | 25d | 2020-06-26 A | 2020-07-30 | 1 | 50% | 12.5d | 2020-06-05 | 2020-07-09 | 25d | 1d | 0d |  | Belinda | 200h | 100h |
| 5 | specify module D | 15d | 2020-06-05 A | 2020-06-25 | 1 | 50% | 7.5d | 2020-06-05 | 2020-06-25 | 15d | 26d | 25d |  | Tom | 120h | 60h |
| 6 | check specifications | 2d | 2020-07-31 | 2020-08-03 | 2, 3, 4, 5 |  |  | 2020-07-10 | 2020-07-13 | 2d | 1d | 0d |  | Amanada | 16h |  |
| 7 | design moudle A | 7d | 2020-08-04 | 2020-08-12 | 6 |  |  | 2020-07-14 | 2020-07-22 | 7d | 1d | 0d |  | Daisy | 56h |  |
| 8 | design moudle B | 6d | 2020-08-10 | 2020-08-17 | 6 |  |  | 2020-07-14 | 2020-07-21 | 6d | 0d |  | start no earlier than 2020-08-10 | Tom | 48h |  |
| 9 | design moudle C | 4d | 2020-08-04 | 2020-08-07 | 6 |  |  | 2020-07-14 | 2020-07-17 | 4d | 19d | 0d |  | Belinda | 32h |  |
| 10 | design moudle D | 4d | 2020-08-04 | 2020-08-07 | 6 |  |  | 2020-07-14 | 2020-07-17 | 4d | 9d | 0d |  | Tom | 32h |  |
| 11 | code/test module A | 30d | 2020-08-13 | 2020-09-23 | 7 |  |  | 2020-07-23 | 2020-09-02 | 30d | 1d |  |  | Gavin | 240h |  |
| 12 | code/test module B | 28d | 2020-08-18 | 2020-09-24 | 8 |  |  | 2020-07-22 | 2020-08-28 | 28d | 0d |  |  | Purdy | 224h |  |
| 13 | code/test module C | 15d | 2020-08-10 | 2020-08-28 | 9 |  |  | 2020-07-20 | 2020-08-07 | 15d | 19d |  |  | Justin | 120h |  |
| 14 | code/test module D | 25d | 2020-08-10 | 2020-09-11 | 10 |  |  | 2020-07-20 | 2020-08-21 | 25d | 9d |  |  | Spencer | 200h |  |
| 15 | system intergration | 6d | 2020-09-25 | 2020-10-02 | 11, 12, 13, 14 |  |  | 2020-09-03 | 2020-09-10 | 6d | 0d |  |  | Belinda | 48h |  |
